# WBS-62015005

How a schedule from MS Project changed from version to version. A marks actual dates.

## Version 1 (saved 2021-08-30, file CE64-18.mpp)

Note of the change: Upload Gantt Chart ครั้งที่ 1

| ID | WBS | Task | Duration | Start | Finish | Predecessors | Total float | Constraint |
| --- | --- | --- | --- | --- | --- | --- | --- | --- |
| 1 | 1 | **Requirement Analysis** | 11d? | 2021-08-16 | 2021-08-31 |  |  |  |
| 2 | 1.1 | **กำหนดขอบเขตโครงงาน** | 1d | 2021-08-17 | 2021-08-17 |  | 42.25d |  |
| 3 |  | ระบุขอบเขตและวัตถุประสงค์ | 1d | 2021-08-17 | 2021-08-17 |  | 42.25d |  |
| 4 | 1.2 | **Develop Scope เบื้องต้น** | 6d | 2021-08-18 | 2021-08-25 |  | 42.25d |  |
| 5 |  | Functional Requirements | 3d | 2021-08-18 | 2021-08-20 | 3 | 42.25d |  |
| 6 |  | Non Functional Requirements | 3d | 2021-08-23 | 2021-08-25 | 5 | 42.25d |  |
| 7 | 1.3 | **Data Preparation** | 0.75d? | 2021-08-26 | 2021-08-26 |  | 42.25d |  |
| 8 |  | Map Digitization | 0.75d? | 2021-08-26 | 2021-08-26 | 6 | 42.25d |  |
| 9 | 2 | **Design Phase** | 15d | 2021-08-31 | 2021-09-21 |  |  |  |
| 10 |  | UX/UI Design | 5d | 2021-09-01 | 2021-09-07 | 8 | 39d |  |
| 11 |  | Database Design | 2d | 2021-09-08 | 2021-09-09 | 10 | 39d |  |
| 12 |  | System Architecture Design | 0.5d | 2021-09-10 | 2021-09-10 | 11 | 39d |  |
| 13 |  | Software Architecture Design | 1d | 2021-09-10 | 2021-09-13 | 12 | 39d |  |
| 14 |  | 1st Review | 1d | 2021-09-13 | 2021-09-14 | 13 | 39d |  |
| 15 |  | Design Phase Complete | 0d | 2021-09-14 | 2021-09-14 | 14 | 39d |  |
| 16 | 3 | **Implementation** | 89d | 2021-09-22 | 2022-01-22 |  |  |  |
| 17 | 3.1 | **Status Update Meeting** | 45.12d | 2021-08-18 | 2021-10-21 |  | 0d |  |
| 18 |  | Status Update Meeting 1 | 1h | 2021-08-18 | 2021-08-19 |  |  | start no earlier than 2021-08-18 |
| 19 |  | Status Update Meeting 2 | 1h | 2021-08-25 | 2021-08-26 |  |  | start no earlier than 2021-08-25 |
| 20 |  | Status Update Meeting 3 | 1h | 2021-09-01 | 2021-09-02 |  |  | start no earlier than 2021-09-01 |
| 21 |  | Status Update Meeting 4 | 1h | 2021-09-08 | 2021-09-09 |  |  | start no earlier than 2021-09-08 |
| 22 |  | Status Update Meeting 5 | 1h | 2021-09-15 | 2021-09-16 |  |  | start no earlier than 2021-09-15 |
| 23 |  | Status Update Meeting 6 | 1h | 2021-09-22 | 2021-09-23 |  |  | start no earlier than 2021-09-22 |
| 24 |  | Status Update Meeting 7 | 1h | 2021-09-29 | 2021-09-30 |  |  | start no earlier than 2021-09-29 |
| 25 |  | Status Update Meeting 8 | 1h | 2021-10-06 | 2021-10-07 |  |  | start no earlier than 2021-10-06 |
| 26 |  | Status Update Meeting 9 | 1h | 2021-10-13 | 2021-10-14 |  |  | start no earlier than 2021-10-13 |
| 27 |  | Status Update Meeting 10 | 1h | 2021-10-20 | 2021-10-21 |  |  | start no earlier than 2021-10-20 |
| 28 | 3.1 | **Tools Study** | 10d | 2021-09-22 | 2021-10-05 |  | 33.5d |  |
| 29 |  | study Vue.js | 5d | 2021-09-22 | 2021-09-28 | 15 | 33.5d |  |
| 30 |  | study Python | 5d | 2021-09-29 | 2021-10-05 | 29 | 33.5d |  |
| 31 | 3.3 | **Account & Login Page** | 7d | 2021-10-06 | 2021-10-14 |  | 33.5d |  |
| 32 |  | Front End Develop | 3d | 2021-10-06 | 2021-10-08 | 30 | 33.5d |  |
| 33 |  | Backend & API Develop | 3d | 2021-10-11 | 2021-10-13 | 32 | 33.5d |  |
| 34 |  | Testing & Approval | 1d | 2021-10-14 | 2021-10-14 | 33 | 33.5d |  |
| 35 | 3.4 | **Basic Information Page** | 10.5d | 2021-10-15 | 2021-10-29 |  | 33.5d |  |
| 36 |  | Front End | 5d | 2021-10-15 | 2021-10-21 | 34 | 33.5d |  |
| 37 |  | Backend & API | 5d | 2021-10-22 | 2021-10-28 | 36 | 33.5d |  |
| 38 |  | Testing & Approval | 0.5d | 2021-10-29 | 2021-10-29 | 37 | 33.5d |  |
| 39 | 3.5 | **Server** | 5d | 2021-10-29 | 2021-11-05 |  | 33.5d |  |
| 40 |  | รับ Data จาก DLT | 5d | 2021-10-29 | 2021-11-05 | 38 | 33.5d |  |
| 41 | 3.6 | **Test Plan** | 3d | 2021-11-05 | 2021-11-10 |  | 33.5d |  |
| 42 |  | Review and Approve Test Plan | 3d | 2021-11-05 | 2021-11-10 | 40 | 33.5d |  |
| 43 | 3.7 | **UAT (User Acceptance Testing) Document** | 3d | 2021-11-10 | 2021-11-15 |  | 33.5d |  |
| 44 |  | Review UAT Document | 2d | 2021-11-10 | 2021-11-12 | 42 | 33.5d |  |
| 45 |  | Approve UAT Document | 1d | 2021-11-12 | 2021-11-15 | 44 | 33.5d |  |
| 46 | 3.8 | **Mock Demo - First** | 2d | 2021-11-15 | 2021-11-17 |  | 33.5d |  |
| 47 |  | First Demo Meeting | 1d | 2021-11-15 | 2021-11-16 | 45 | 33.5d |  |
| 48 |  | Review Notes for First Mock Demo | 1d | 2021-11-16 | 2021-11-17 | 47 | 33.5d |  |
| 49 | 4 | **Acceptance Testing** | 8d | 2021-12-23 | 2022-01-03 |  |  |  |
| 50 |  | Setup Internal Team for UAT | 1d | 2021-12-23 | 2021-12-23 | 48 | 8d |  |
| 51 |  | UAT (User Acceptance Testing) | 3d | 2021-12-24 | 2021-12-28 | 50 | 8d |  |
| 52 |  | Implementation Phase Complete | 0d | 2021-12-28 | 2021-12-28 | 51 | 8d |  |
| 53 | 5 | **Deployment** | 11d | 2022-01-02 | 2022-01-14 |  |  |  |
| 54 | 5.1 | **Deploy Infra** | 8d | 2022-01-03 | 2022-01-12 |  | 5d |  |
| 55 |  | Deployment Architecture setup | 3d | 2022-01-03 | 2022-01-05 | 52 | 5d |  |
| 56 |  | Preliminary Tech Stack Installation | 3d | 2022-01-06 | 2022-01-10 | 55 | 5d |  |
| 57 |  | Staging and Production Server Testing | 2d | 2022-01-11 | 2022-01-12 | 56 | 5d |  |
| 58 |  | Deployment Complete | 0d | 2022-01-12 | 2022-01-12 | 57 | 5d |  |
| 59 | 6 | **User Manual Review** | 4d | 2022-01-15 | 2022-01-19 |  |  |  |
| 60 | 6.1 | **User Manual** | 2d | 2022-01-17 | 2022-01-18 |  | 3d |  |
| 61 |  | Review and Approve User Manual | 2d | 2022-01-17 | 2022-01-18 | 58 | 3d |  |

## Version 2 (saved 2021-09-23, file CE64-18.mpp)

Note of the change: Gantt Chart Upload for Progress 3

Last finish 2022-01-22 → 2022-02-01 (+10d). Complete tasks 0 → 9.

Added:

| ID | Task | Duration | Start | Finish | Predecessors | Resources |
| --- | --- | --- | --- | --- | --- | --- |
| 1 | Start Project | 0d | 2021-08-02 | 2021-08-02 |  |  |
| 5 | ศึกษาข้อมูลที่เกี่ยวข้อง | 1d | 2021-08-17 A | 2021-08-17 A | 4FF | Jarinya; Kandon |
| 11 | เขียน Algorithm ของงาน | 4d | 2021-08-30 A | 2021-09-02 A | 10 | Jarinya |
| 34 | study Docker, Json server | 5d | 2021-10-15 | 2021-10-21 | 33 | Kandon |
| 35 | Code Testing | 2d | 2021-10-22 | 2021-10-25 | 34 | Kandon |
| 39 | Using Firebase for Authentication | 2d | 2021-11-01 | 2021-11-02 | 38FF | Kandon |
| 42 | พัฒนา Algorithm | 2d | 2021-11-04 | 2021-11-05 | 40 | Jarinya |
| 45 | API Web service | 3d | 2021-11-17 | 2021-11-19 | 44 | Kandon |
| 46 | เขียนส่วน Database | 3d | 2021-11-22 | 2021-11-24 | 45 | Kandon |
| 49 | Put Json Server to Docker | 2d | 2021-12-13 | 2021-12-14 | 47 | Kandon |

Removed: 50 Setup Internal Team for UAT; 56 Preliminary Tech Stack Installation

Changed:

| ID | Task | Start | Finish | Duration | Complete | Total float | Predecessors | Other |
| --- | --- | --- | --- | --- | --- | --- | --- | --- |
| 2 | **Requirement Analysis** |  | 2021-08-31 → 2021-09-05 (+5d) | 11d? → 15d | 0% → 83% |  |  | baseline start none → 2021-08-16; baseline finish none → 2021-09-05 |
| 3 | **กำหนดขอบเขตโครงงาน** | 2021-08-17 A | 2021-08-17 → 2021-08-18 (+1d) | 1d → 2d | 0% → 100% | 42.25d → none |  | baseline start none → 2021-08-17; baseline finish none → 2021-08-18 |
| 4 | ระบุขอบเขตและวัตถุประสงค์ | 2021-08-17 A | 2021-08-17 A |  | 0% → 100% | 42.25d → none |  | resources Dev Team → Kandon; Advisor; baseline start none → 2021-08-17; baseline finish none → 2021-08-17 |
| 6 | **Develop Scope เบื้องต้น** | 2021-08-18 A | 2021-08-25 → 2021-08-24 (-1d) | 6d → 5d | 0% → 100% | 42.25d → none |  | baseline start none → 2021-08-18; baseline finish none → 2021-08-24 |
| 7 | Functional Requirements | 2021-08-18 A | 2021-08-20 → 2021-08-18 A (-2d) | 3d → 1d | 0% → 100% | 42.25d → none | 4 → 5 | resources Dev Team → Kandon; baseline start none → 2021-08-18; baseline finish none → 2021-08-18 |
| 8 | Non Functional Requirements | 2021-08-23 → 2021-08-19 A (-4d) | 2021-08-25 → 2021-08-19 A (-6d) | 3d → 1d | 0% → 100% | 42.25d → none |  | resources Dev Team → Jarinya; baseline start none → 2021-08-19; baseline finish none → 2021-08-19 |
| 9 | **Data Preparation** | 2021-08-26 → 2021-08-24 A (-2d) | 2021-08-26 → 2021-09-03 (+8d) | 0.75d? → 9d | 0% → 75% | 42.25d → none |  | baseline start none → 2021-08-24; baseline finish none → 2021-09-03 |
| 10 | Map Digitization | 2021-08-26 → 2021-08-24 A (-2d) | 2021-08-26 → 2021-08-27 (+1d) | 0.75d? → 4d | 0% → 50% | 42.25d → 112d |  | resources none → Kandon; baseline start none → 2021-08-24; baseline finish none → 2021-08-27 |
| 12 | **Design Phase** | 2021-08-31 → 2021-09-06 A (+6d) | 2021-09-21 → 2021-09-22 (+1d) | 15d → 13d | 0% → 42% |  |  | baseline start none → 2021-09-06; baseline finish none → 2021-09-22 |
| 13 | UX/UI Design | 2021-09-01 → 2021-09-06 A (+5d) | 2021-09-07 → 2021-09-08 (+1d) | 5d → 3d | 0% → 75% | 39d → 0.5d | 10 → 11 | resources Dev Team → Kandon; baseline start none → 2021-09-06; baseline finish none → 2021-09-08 |
| 14 | Database Design | 2021-09-08 → 2021-09-09 A (+1d) | 2021-09-09 → 2021-09-10 (+1d) |  | 0% → 25% | 39d → 0.25d |  | resources Dev Team → Jarinya; baseline start none → 2021-09-09; baseline finish none → 2021-09-10 |
| 15 | System Architecture Design | 2021-09-10 → 2021-09-13 A (+3d) | 2021-09-10 → 2021-09-13 (+3d) | 0.5d → 1d | 0% → 25% | 39d → 0.25d |  | resources Dev Team → Kandon; baseline start none → 2021-09-13; baseline finish none → 2021-09-13 |
| 16 | Software Architecture Design | 2021-09-10 → 2021-09-14 A (+4d) | 2021-09-13 → 2021-09-14 (+1d) |  | 0% → 25% | 39d → 0.5d |  | resources Dev Team → Jarinya; baseline start none → 2021-09-14; baseline finish none → 2021-09-14 |
| 17 | ทบทวนและแก้ปัญการออกแบบ | 2021-09-13 → 2021-09-15 A (+2d) | 2021-09-14 → 2021-09-16 (+2d) | 1d → 2d | 0% → 25% | 39d → 27d |  | was named 1st Review; resources Dev Team; Advisor → Kandon; baseline start none → 2021-09-15; baseline finish none → 2021-09-15 |
| 18 | Design Phase Complete | 2021-09-14 → 2021-09-16 (+2d) | 2021-09-14 → 2021-09-16 (+2d) |  |  | 39d → 27d |  | baseline start none → 2021-09-15; baseline finish none → 2021-09-15 |
| 19 | **Implementation** | 2021-09-22 → 2021-09-30 (+8d) | 2022-01-22 → 2022-01-05 (-17d) | 89d → 70d? | 0% → 1% |  |  | baseline start none → 2021-09-30; baseline finish none → 2022-01-05 |
| 20 | **Status Update Meeting** | 2021-08-18 A |  | 45.12d → 46d | 0% → 40% | 0d → none |  | baseline start none → 2021-08-18; baseline finish none → 2021-10-21 |
| 21 | Status Update Meeting 1 | 2021-08-18 A | 2021-08-19 A |  | 0% → 100% |  |  | baseline start none → 2021-08-18; baseline finish none → 2021-08-19 |
| 22 | Status Update Meeting 2 | 2021-08-25 A | 2021-08-26 A |  | 0% → 100% |  |  | baseline start none → 2021-08-25; baseline finish none → 2021-08-26 |
| 23 | Status Update Meeting 3 | 2021-09-01 A | 2021-09-02 A |  | 0% → 100% |  |  | baseline start none → 2021-09-01; baseline finish none → 2021-09-02 |
| 24 | Status Update Meeting 4 |  | 2021-09-09 → 2021-09-08 (-1d) |  |  |  |  | baseline start none → 2021-09-08; baseline finish none → 2021-09-09 |
| 25 | Status Update Meeting 5 | 2021-09-15 A | 2021-09-16 A |  | 0% → 100% |  |  | baseline start none → 2021-09-15; baseline finish none → 2021-09-16 |
| 26 | Status Update Meeting 6 |  |  |  |  |  |  | baseline start none → 2021-09-22; baseline finish none → 2021-09-23 |
| 27 | Status Update Meeting 7 |  |  |  |  |  |  | baseline start none → 2021-09-29; baseline finish none → 2021-09-30 |
| 28 | Status Update Meeting 8 |  |  |  |  |  |  | baseline start none → 2021-10-06; baseline finish none → 2021-10-07 |
| 29 | Status Update Meeting 9 |  |  |  |  |  |  | baseline start none → 2021-10-13; baseline finish none → 2021-10-14 |
| 30 | Status Update Meeting 10 |  |  |  |  |  |  | baseline start none → 2021-10-20; baseline finish none → 2021-10-21 |
| 31 | **Tools Study** |  | 2021-10-05 → 2021-10-25 (+20d) | 10d → 24d |  | 33.5d → none |  | baseline start none → 2021-09-22; baseline finish none → 2021-10-22 |
| 32 | study Vue.js | 2021-09-22 → 2021-10-01 (+9d) | 2021-09-28 → 2021-10-07 (+9d) |  |  | 33.5d → 27d | 18 → 18FS+10d | constraint none → start no earlier than 2021-09-22; resources Dev1 → Kandon; baseline start none → 2021-09-30; baseline finish none → 2021-10-06 |
| 33 | study Python | 2021-09-29 → 2021-10-08 (+9d) | 2021-10-05 → 2021-10-14 (+9d) |  |  | 33.5d → 27d |  | resources Dev2 → Jarinya; baseline start none → 2021-10-07; baseline finish none → 2021-10-13 |
| 36 | **Account & Login Page** | 2021-10-06 → 2021-10-26 (+20d) | 2021-10-14 → 2021-11-03 (+20d) |  |  | 33.5d → 27d |  | baseline start none → 2021-10-25; baseline finish none → 2021-11-02 |
| 37 | Front End Develop | 2021-10-06 → 2021-10-26 (+20d) | 2021-10-08 → 2021-10-28 (+20d) |  |  | 33.5d → 27d | 33 → 35 | resources Dev1 → Kandon; baseline start none → 2021-10-25; baseline finish none → 2021-10-27 |
| 38 | Backend & API Develop | 2021-10-11 → 2021-10-29 (+18d) | 2021-10-13 → 2021-11-02 (+20d) |  |  | 33.5d → 27d |  | resources Dev2 → Jarinya; baseline start none → 2021-10-28; baseline finish none → 2021-11-01 |
| 40 | Testing & Approval | 2021-10-14 → 2021-11-03 (+20d) | 2021-10-14 → 2021-11-03 (+20d) |  |  | 33.5d → 27d | 38 → 39 | resources Dev Team → Kandon; Jarinya; baseline start none → 2021-11-02; baseline finish none → 2021-11-02 |
| 41 | **Basic Information Page** | 2021-10-15 → 2021-10-02 (-13d) | 2021-10-29 → 2021-12-03 (+35d) | 10.5d → 46d |  | 33.5d → none |  | baseline start none → 2021-10-02; baseline finish none → 2021-12-03 |
| 43 | เขียนโปรแกรมส่วน Front End ด้วย Vue.js | 2021-10-15 → 2021-11-08 (+24d) | 2021-10-21 → 2021-11-16 (+26d) | 5d → 7d |  | 33.5d → 27d | 40 → 42 | was named Front End; resources Dev1 → Kandon; baseline start none → 2021-11-05; baseline finish none → 2021-11-15 |
| 44 | เขียนโปรแกรมส่วน Backend ด้วย Python | 2021-10-22 → 2021-11-08 (+17d) | 2021-10-28 → 2021-11-16 (+19d) | 5d → 7d |  | 33.5d → 27d | 43 → 43FF | was named Backend & API; resources Dev2 → Jarinya; baseline start none → 2021-11-05; baseline finish none → 2021-11-15 |
| 47 | Testing & Approval | 2021-10-29 → 2021-11-25 (+27d) | 2021-10-29 → 2021-11-25 (+27d) | 0.5d → 1d |  | 33.5d → 27d | 44 → 46 | resources Dev Team; Advisor → Kandon; Jarinya; baseline start none → 2021-11-24; baseline finish none → 2021-11-24 |
| 48 | **Server & Database** | 2021-10-29 → 2021-12-12 (+44d) | 2021-11-05 → 2021-12-17 (+42d) | 5d → 6d? |  | 33.5d → none |  | was named Server; baseline start none → 2021-12-12; baseline finish none → 2021-12-17 |
| 50 | Get Data form DLT | 2021-10-29 → 2021-12-15 (+47d) | 2021-11-05 → 2021-12-16 (+41d) | 5d → 2d |  | 33.5d → 16d | 47 → 49 | was named รับ Data จาก DLT; resources Dev Team → Jarinya; baseline start none → 2021-12-15; baseline finish none → 2021-12-16 |
| 51 | **Test Plan** | 2021-11-05 → 2021-12-17 (+42d) | 2021-11-10 → 2021-12-20 (+40d) | 3d → 2d |  | 33.5d → none |  | baseline start none → 2021-12-17; baseline finish none → 2021-12-20 |
| 52 | Review and Approve Test Plan | 2021-11-05 → 2021-12-17 (+42d) | 2021-11-10 → 2021-12-20 (+40d) | 3d → 2d |  | 33.5d → 16d |  | resources Dev Team → Kandon; Jarinya; baseline start none → 2021-12-17; baseline finish none → 2021-12-20 |
| 53 | **UAT (User Acceptance Testing) Document** | 2021-11-10 → 2021-12-21 (+41d) | 2021-11-15 → 2021-12-23 (+38d) |  |  | 33.5d → 16d |  | baseline start none → 2021-12-21; baseline finish none → 2021-12-23 |
| 54 | Review UAT Document | 2021-11-10 → 2021-12-21 (+41d) | 2021-11-12 → 2021-12-22 (+40d) |  |  | 33.5d → 16d |  | resources Dev Team → Jarinya; baseline start none → 2021-12-21; baseline finish none → 2021-12-22 |
| 55 | Approve UAT Document | 2021-11-12 → 2021-12-23 (+41d) | 2021-11-15 → 2021-12-23 (+38d) |  |  | 33.5d → 16d |  | resources Dev Team → Kandon; baseline start none → 2021-12-23; baseline finish none → 2021-12-23 |
| 56 | **Mock Demo - First** | 2021-11-15 → 2021-12-24 (+39d) | 2021-11-17 → 2021-12-28 (+41d) | 2d → 3d |  | 33.5d → none |  | baseline start none → 2021-12-24; baseline finish none → 2021-12-28 |
| 57 | First Demo Meeting | 2021-11-15 → 2021-12-24 (+39d) | 2021-11-16 → 2021-12-24 (+38d) |  |  | 33.5d → 16d |  | resources Dev Team → Kandon; baseline start none → 2021-12-24; baseline finish none → 2021-12-24 |
| 58 | Review Notes for First Mock Demo | 2021-11-16 → 2021-12-27 (+41d) | 2021-11-17 → 2021-12-27 (+40d) |  |  | 33.5d → 16d |  | resources Dev Team → Jarinya; baseline start none → 2021-12-27; baseline finish none → 2021-12-27 |
| 59 | **Acceptance Testing** | 2021-12-23 → 2022-01-06 (+14d) | 2022-01-03 → 2022-01-14 (+11d) | 8d → 7d |  |  |  | baseline start none → 2022-01-06; baseline finish none → 2022-01-14 |
| 60 | UAT (User Acceptance Testing) | 2021-12-24 → 2022-01-06 (+13d) | 2021-12-28 → 2022-01-10 (+13d) |  |  | 8d → 9d | Setup Internal Team for UAT → 58 | resources Dev Team → Kandon; baseline start none → 2022-01-06; baseline finish none → 2022-01-10 |
| 61 | Implementation Phase Complete | 2021-12-28 → 2022-01-10 (+13d) | 2021-12-28 → 2022-01-10 (+13d) |  |  | 8d → 9d |  | resources Dev Team → none; baseline start none → 2022-01-10; baseline finish none → 2022-01-10 |
| 62 | **Deployment** | 2022-01-02 → 2022-01-15 (+13d) | 2022-01-14 → 2022-01-25 (+11d) | 11d → 8d |  |  |  | baseline start none → 2022-01-15; baseline finish none → 2022-01-25 |
| 63 | **Deploy Infra** | 2022-01-03 → 2022-01-17 (+14d) | 2022-01-12 → 2022-01-21 (+9d) | 8d → 5d |  |  |  | baseline start none → 2022-01-17; baseline finish none → 2022-01-21 |
| 64 | Deployment Architecture setup | 2022-01-03 → 2022-01-17 (+14d) | 2022-01-05 → 2022-01-19 (+14d) |  |  |  |  | resources Dev Team → Kandon; baseline start none → 2022-01-17; baseline finish none → 2022-01-19 |
| 65 | Staging and Production Server Testing | 2022-01-11 → 2022-01-20 (+9d) | 2022-01-12 → 2022-01-21 (+9d) |  |  |  | Preliminary Tech Stack Installation → 64 | resources Dev Team → Jarinya; baseline start none → 2022-01-20; baseline finish none → 2022-01-21 |
| 66 | Deployment Complete | 2022-01-12 → 2022-01-21 (+9d) | 2022-01-12 → 2022-01-21 (+9d) |  |  |  |  | baseline start none → 2022-01-21; baseline finish none → 2022-01-21 |
| 67 | **User Manual Review** | 2022-01-15 → 2022-01-26 (+11d) | 2022-01-19 → 2022-02-01 (+13d) | 4d → 5d |  |  |  | baseline start none → 2022-01-26; baseline finish none → 2022-02-01 |
| 68 | **User Manual** | 2022-01-17 → 2022-01-26 (+9d) | 2022-01-18 → 2022-01-27 (+9d) |  |  |  |  | baseline start none → 2022-01-26; baseline finish none → 2022-01-27 |
| 69 | Review and Approve User Manual | 2022-01-17 → 2022-01-26 (+9d) | 2022-01-18 → 2022-01-27 (+9d) |  |  |  |  | resources Dev Team; Advisor → Kandon; Advisor; Jarinya; baseline start none → 2022-01-26; baseline finish none → 2022-01-27 |

## Version 3 (saved 2021-10-15, file CE64-18_5005_5014.mpp)

Note of the change: update mpp file

Last finish stays 2022-02-01. Complete tasks 9 → 10.

Changed:

| ID | Task | Start | Finish | Complete | Total float |
| --- | --- | --- | --- | --- | --- |
| 12 | **Design Phase** |  |  | 42% → 83% |  |
| 13 | UX/UI Design |  | 2021-09-08 A | 75% → 100% | 0.5d → none |
| 14 | Database Design |  |  | 25% → 75% | 0.25d → 0.75d |
| 15 | System Architecture Design |  |  | 25% → 75% | 0.25d → 0.75d |
| 16 | Software Architecture Design |  |  | 25% → 75% | 0.5d → 1.5d |
| 17 | ทบทวนและแก้ปัญการออกแบบ |  |  | 25% → 75% | 27d → 2.5d |
| 19 | **Implementation** |  |  | 1% → 9% |  |
| 31 | **Tools Study** |  |  | 0% → 29% |  |
| 32 | study Vue.js | 2021-10-01 A |  | 0% → 50% | 27d → 1.25d |
| 33 | study Python | 2021-10-08 A |  | 0% → 25% | 27d → 1.25d |
| 34 | study Docker, Json server | 2021-10-15 A |  | 0% → 25% |  |
